Schedule from MS Project, 2024-01-15 to 2025-02-07, status date 2024-05-13, costs in р., A marks actual dates.
Microsoft

## Calendars

- Стандартный: Mon-Fri 09:00-13:00, 14:00-18:00; Sat-Sun off.

## Resources

| Resource | Unit | Rate |
| --- | --- | --- |
| Компьютер | штуки | 60000 |
| Компьютерная мышь | штука | 2000 |
| клавиатура | штука | 2000 |
| Бумага | пачка | 200 |
| Принтер | штука | 35000 |
| Сервер | штука | 2500000 |
| Сетевое оборудование | штука | 600000 |
| Хранилище данных | штука | 4500000 |
| Аналитик |  | 2000 |
| Проектировщик |  | 2500 |
| Специалист по обеспечению |  | 2200 |
| Разработчик 1 |  | 3000 |
| Разработчик 2 |  | 3000 |
| Руководитель проекта |  | 3500 |
| Менеджер по внедрению |  | 2600 |
| Системный администратор |  | 2700 |
| Связь и инфраструктура |  |  |
| Непредвиденные расходы |  |  |

## Schedule

| ID | WBS | Task | Duration | Start | Finish | Predecessors | Complete | Remaining | Total slack | Constraint | Resources | Work | Actual work | Cost | Actual cost |
| --- | --- | --- | --- | --- | --- | --- | --- | --- | --- | --- | --- | --- | --- | --- | --- |
| 1 | 1 | **Этап 0. Подготовка проекта** | 23d | 2024-01-15 A | 2024-02-14 A |  | 100% |  |  |  |  | 544h | 544h | 1,839,400 | 1,839,400 |
| 2 | 1.1 | Анализ предметной области | 10d | 2024-01-15 A | 2024-01-26 A |  | 100% |  |  | start no earlier than 2024-01-15 | Аналитик; Бумага [5 пачка]; клавиатура [1 штука]; Компьютер [1 штуки]; Компьютерная мышь [1 штука]; Принтер [1 штука]; Проектировщик; Руководитель проекта; Связь и инфраструктура [0.1%]; Специалист по обеспечению | 320h | 320h | 916,000 | 916,000 |
| 3 | 1.2 | Определение целей и задач проекта, разработка ТЗ | 5d | 2024-01-29 A | 2024-02-02 A | 2 | 100% |  |  |  | Бумага [3 пачка]; клавиатура [1 штука]; Компьютер [1 штуки]; Компьютерная мышь [1 штука]; Принтер [1 штука]; Проектировщик; Руководитель проекта; Связь и инфраструктура [0.1%]; Специалист по обеспечению | 120h | 120h | 427,600 | 427,600 |
| 4 | 1.3 | Разработка концепции программного продукта | 5d | 2024-02-05 A | 2024-02-09 A | 3 | 100% |  |  |  | Бумага [4 пачка]; клавиатура [1 штука]; Компьютер [1 штуки]; Принтер [1 штука]; Проектировщик; Руководитель проекта; Связь и инфраструктура [0.1%] | 80h | 80h | 337,800 | 337,800 |
| 5 | 1.4 | Утверждение ТЗ | 3d | 2024-02-12 A | 2024-02-14 A | 4 | 100% |  |  |  | Бумага [5 пачка]; клавиатура [1 штука]; Компьютер [1 штуки]; Непредвиденные расходы [0.1%]; Принтер [1 штука]; Проектировщик; Связь и инфраструктура [0.1%] | 24h | 24h | 158,000 | 158,000 |
| 6 | 2 | **Этап 1. Сбор требований** | 10d | 2024-02-15 A | 2024-02-28 A | 1 | 100% |  |  |  |  | 120h | 120h | 446,400 | 446,400 |
| 7 | 2.1 | Анализ требований и потребностей пользователей | 5d | 2024-02-15 A | 2024-02-21 A |  | 100% |  |  |  | Аналитик; Бумага [1 пачка]; клавиатура [1 штука]; Компьютер [1 штуки]; Компьютерная мышь [1 штука]; Принтер [1 штука]; Связь и инфраструктура [0.1%]; Специалист по обеспечению | 80h | 80h | 267,200 | 267,200 |
| 8 | 2.2 | Исследование конкурентов и анализ рынка | 5d | 2024-02-22 A | 2024-02-28 A | 7 | 100% |  |  |  | Аналитик; Бумага [1 пачка]; клавиатура [1 штука]; Компьютер [1 штуки]; Компьютерная мышь [1 штука]; Принтер [1 штука]; Связь и инфраструктура [0.1%]; Непредвиденные расходы [0.1%] | 40h | 40h | 179,200 | 179,200 |
| 9 | 3 | **Этап 2. Архитектура и дизайн** | 31d | 2024-02-29 A | 2024-04-11 A | 6 | 100% |  |  |  |  | 552h | 552h | 6,440,000 | 6,440,000 |
| 10 | 3.1 | Проектирование модулей | 7d | 2024-02-29 A | 2024-03-08 A |  | 100% |  |  |  | клавиатура [1 штука]; Компьютер [1 штуки]; Компьютерная мышь [1 штука]; Разработчик 1; Разработчик 2; Руководитель проекта; Связь и инфраструктура [0.1%] | 168h | 168h | 596,000 | 596,000 |
| 11 | 3.2 | Создание диаграммы классов приложения | 5d | 2024-03-11 A | 2024-03-15 A | 10 | 100% |  |  |  | клавиатура [1 штука]; Компьютер [1 штуки]; Компьютерная мышь [1 штука]; Разработчик 1; Разработчик 2; Связь и инфраструктура [0.1%] | 80h | 80h | 304,000 | 304,000 |
| 12 | 3.3 | Создание схем работы классов приложения | 9d | 2024-03-18 A | 2024-03-28 A | 11 | 100% |  |  |  | клавиатура [1 штука]; Компьютер [1 штуки]; Компьютерная мышь [1 штука]; Разработчик 1; Разработчик 2; Связь и инфраструктура [0.1%] | 144h | 144h | 496,000 | 496,000 |
| 13 | 3.4 | Разработка структуры базы данных программы | 10d | 2024-03-29 A | 2024-04-11 A | 12 | 100% |  |  |  | клавиатура [1 штука]; Компьютер [1 штуки]; Компьютерная мышь [1 штука]; Непредвиденные расходы [0.1%]; Разработчик 1; Разработчик 2; Связь и инфраструктура [0.1%]; Хранилище данных [1 штука] | 160h | 160h | 5,044,000 | 5,044,000 |
| 14 | 4 | **Этап 3. Разработка** | 74d | 2024-04-12 A | 2024-07-24 | 9 | 73% | 20d | 0d |  |  | 1504h | 704h | 18,793,400 | 16,270,400 |
| 15 | 4.1 | Разработка интерфейса | 20d | 2024-04-12 A | 2024-05-09 A |  | 100% |  |  |  | клавиатура [1 штука]; Компьютер [1 штуки]; Компьютерная мышь [1 штука]; Разработчик 1; Сервер [1 штука]; Хранилище данных [1 штука]; Связь и инфраструктура [0.1%] | 160h | 160h | 7,544,000 | 7,544,000 |
| 16 | 4.2 | Разработка модулей | 20d | 2024-05-10 A | 2024-06-06 A | 15 | 100% |  |  |  | клавиатура [1 штука]; Компьютер [1 штуки]; Компьютерная мышь [1 штука]; Разработчик 1; Разработчик 2; Сервер [1 штука]; Связь и инфраструктура [0.1%] | 320h | 320h | 3,524,000 | 3,524,000 |
| 17 | 4.3 | Создание базы данных прложения | 14d | 2024-06-07 A | 2024-06-26 A | 16 | 100% |  |  | start no earlier than 2024-04-04 | клавиатура [1 штука]; Компьютер [1 штуки]; Компьютерная мышь [1 штука]; Разработчик 2; Связь и инфраструктура [0.1%]; Системный администратор; Хранилище данных [1 штука] | 224h | 224h | 5,202,400 | 5,202,400 |
| 18 | 4.4 | Создание документации ИС | 20d | 2024-06-27 | 2024-07-24 | 17 |  |  | 0d |  | Бумага [10 пачка]; клавиатура [1 штука]; Компьютер [1 штуки]; Компьютерная мышь [1 штука]; Непредвиденные расходы [0.1%]; Принтер [3 штука]; Проектировщик; Разработчик 1; Разработчик 2; Руководитель проекта; Системный администратор | 800h |  | 2,523,000 |  |
| 19 | 5 | **Этап 4. Тестирование** | 37d | 2024-07-25 | 2024-09-13 | 14 |  |  | 0d |  |  | 888h |  | 16,703,200 |  |
| 20 | 5.1 | Отладка программы | 17d | 2024-07-25 | 2024-08-16 |  |  |  | 0d |  | клавиатура [1 штука]; Компьютер [1 штуки]; Компьютерная мышь [1 штука]; Разработчик 1; Разработчик 2; Связь и инфраструктура [0.1%]; Сервер [1 штука]; Системный администратор; Хранилище данных [1 штука] | 408h |  | 8,247,200 |  |
| 21 | 5.2 | Тестирование и исправление ошибок | 20d | 2024-08-19 | 2024-09-13 | 20 |  |  | 0d |  | клавиатура [1 штука]; Компьютер [1 штуки]; Компьютерная мышь [1 штука]; Непредвиденные расходы [0.1%]; Разработчик 1; Разработчик 2; Связь и инфраструктура [0.1%]; Сервер [1 штука]; Системный администратор; Хранилище данных [1 штука] | 480h |  | 8,456,000 |  |
| 22 | 6 | **Этап 5. Внедрение** | 15d | 2024-09-16 | 2024-10-04 | 19 |  |  | 0d |  |  | 480h |  | 16,683,400 |  |
| 23 | 6.1 | Создание плана внедрения, определение ключевых этапов | 15d | 2024-09-16 | 2024-10-04 |  |  |  | 0d |  | Бумага [2 пачка]; клавиатура [1 штука]; Компьютер [1 штуки]; Компьютерная мышь [1 штука]; Менеджер по внедрению; Непредвиденные расходы [0.1%]; Принтер [1 штука]; Руководитель проекта; Связь и инфраструктура [0.1%]; Сервер [1 штука]; Сетевое оборудование [1 штука]; Специалист по обеспечению | 360h |  | 4,195,400 |  |
| 24 | 6.2 | Обучение пользователей и технической поддержки | 15d | 2024-09-16 | 2024-10-04 | 18 |  |  | 0d |  | клавиатура [1 штука]; Компьютер [1 штуки]; Компьютерная мышь [1 штука]; Связь и инфраструктура [0.1%]; Сервер [1 штука]; Сетевое оборудование [1 штука]; Хранилище данных [2 штука]; Системный администратор | 120h |  | 12,488,000 |  |

| ID | WBS | Task | Duration | Start | Finish | Predecessors | Total slack | Resources | Work | Cost |
| --- | --- | --- | --- | --- | --- | --- | --- | --- | --- | --- |
| 25 | 7 | **Этап 6. Поддержка** | 90d | 2024-10-07 | 2025-02-07 | 22 | 0d |  | 2160h | 13,712,000 |
| 26 | 7.1 | Осуществление поддержи ИС | 90d | 2024-10-07 | 2025-02-07 |  | 0d | Системный администратор; клавиатура [1 штука]; Компьютер [1 штуки]; Компьютерная мышь [1 штука]; Непредвиденные расходы [0.1%]; Руководитель проекта; Связь и инфраструктура [0.1%]; Сервер [1 штука]; Сетевое оборудование [1 штука]; Специалист по обеспечению; Хранилище данных [1 штука] | 2160h | 13,712,000 |
